# NU_Racing_MCHA_Gantt_Chart

Schedule from ProjectLibre, 2025-02-24 to 2025-07-02.

## Calendars

- Standard: Mon-Fri 08:00-12:00, 13:00-17:00; Sat-Sun off. Exceptions (off unless hours are given): 2025-04-21 08:00-12:00, 13:00-17:00, 2025-04-22 to 2025-04-25.

## Resources

| Resource |
| --- |
| Unassigned |
| Jayson Mills |
| Oliver Dowzer |
| Mia Cosentino |
| Zak Lobko |
| Fletcher |
| Alec |
| Oliver Bunny |
| TBA MECH FYP |
| Oscar Rudman |

## Schedule

| ID | WBS | Task | Duration | Start | Finish | Predecessors | Constraint | Resources |
| --- | --- | --- | --- | --- | --- | --- | --- | --- |
| 1 | 1 | **Design, Manufacture and Commission of Nodes** | 67d? | 2025-02-24 | 2025-05-27 |  |  | Jayson Mills; Mia Cosentino; Zak Lobko; Oliver Bunny; TBA MECH FYP |
| 2 | 1.1 | **CEN** | 62d? | 2025-02-24 | 2025-05-20 |  |  | Jayson Mills; Zak Lobko |
| 3 | 1.1.1 | **MOTHER Board V2** | 62d? | 2025-02-24 | 2025-05-20 |  |  | Zak Lobko |
| 4 | 1.1.1.1 | Design | 37d? | 2025-02-24 | 2025-04-15 |  | start no earlier than 2025-02-24 |  |
| 5 | 1.1.1.2 | Shipping | 14d? | 2025-04-16 | 2025-05-05 | 4 | start no earlier than 2025-03-19 |  |
| 6 | 1.1.1.3 | Manufacture and Commission | 11d? | 2025-05-06 | 2025-05-20 | 5 |  |  |
| 7 | 1.1.2 | **BSPD V3** | 52d? | 2025-02-26 | 2025-05-08 |  |  | Jayson Mills |
| 8 | 1.1.2.1 | Design | 30d? | 2025-02-26 | 2025-04-08 |  | start no earlier than 2025-02-26 |  |
| 9 | 1.1.2.2 | Shipping | 14d? | 2025-04-09 | 2025-04-28 | 8 | start no earlier than 2025-03-12 |  |
| 10 | 1.1.2.3 | Manufacture and Commission | 8d? | 2025-04-29 | 2025-05-08 | 9 |  |  |
| 11 | 1.2 | **Pedal Box Redesign** | 67d? | 2025-02-24 | 2025-05-27 |  |  | Jayson Mills; TBA MECH FYP |
| 12 | 1.2.1 | Pedal Box Redesigned | 11d? | 2025-02-24 | 2025-03-10 |  | start no earlier than 2025-02-24 | TBA MECH FYP |
| 13 | 1.2.2 | **PEN V1.2** | 35d? | 2025-04-09 | 2025-05-27 |  |  | Jayson Mills |
| 14 | 1.2.2.1 | Design | 14d? | 2025-04-09 | 2025-04-28 | 8 |  |  |
| 15 | 1.2.2.2 | Shipping | 14d? | 2025-04-29 | 2025-05-16 | 14 | start no earlier than 2025-03-19 |  |
| 16 | 1.2.2.3 | Manufacture and Commission | 7d? | 2025-05-19 | 2025-05-27 | 15 |  |  |
| 17 | 1.3 | **HIP** | 60d? | 2025-02-24 | 2025-05-16 |  |  | Mia Cosentino |
| 18 | 1.3.1 | **HIP V1.3 PCB** | 60d? | 2025-02-24 | 2025-05-16 |  |  | Mia Cosentino |
| 19 | 1.3.1.1 | Design | 32d? | 2025-02-24 | 2025-04-08 |  | start no earlier than 2025-02-24 |  |
| 20 | 1.3.1.2 | Shipping | 14d? | 2025-04-09 | 2025-04-28 | 19 | start no earlier than 2025-03-19 |  |
| 21 | 1.3.1.3 | Manufacture and Commission | 14d? | 2025-04-29 | 2025-05-16 | 20 |  |  |
| 22 | 1.3.2 | **TSAL_Discharge V3** | 52d? | 2025-02-24 | 2025-05-06 |  |  |  |
| 23 | 1.3.2.1 | Design | 32d | 2025-02-24 | 2025-04-08 |  | start no earlier than 2025-02-24 |  |
| 24 | 1.3.2.2 | Shipping | 14d? | 2025-04-09 | 2025-04-28 | 23 | start no earlier than 2025-03-19 |  |
| 25 | 1.3.2.3 | Manufacture and Commission | 6d? | 2025-04-29 | 2025-05-06 | 24 |  |  |

| ID | WBS | Task | Type | Duration | Start | Finish | Predecessors | Constraint | Resources |
| --- | --- | --- | --- | --- | --- | --- | --- | --- | --- |
| 26 | 1.4 | **AIL V2.1** |  | 42.75d? | 2025-02-27 | 2025-04-28 |  |  | Oscar Rudman |
| 27 | 1.4.1 | Design |  | 11d? | 2025-02-27 | 2025-03-13 |  | start no earlier than 2025-02-27 |  |
| 28 | 1.4.2 | Shipping |  | 14d? | 2025-03-14 | 2025-04-02 | 27 | start no earlier than 2025-03-13 |  |
| 29 | 1.4.3 | Manufacture and Commission |  | 6d? | 2025-04-03 | 2025-04-10 | 28 |  |  |
| 30 | 1.4.4 | time till LVD arrives |  | 11.75d? | 2025-04-11 | 2025-04-28 | 29 |  |  |
| 31 | 1.5 | **LVD V3.2** |  | 38d? | 2025-03-14 | 2025-05-06 | 27 |  | Oscar Rudman |
| 32 | 1.5.1 | Design |  | 18d? | 2025-03-14 | 2025-04-08 |  | start no earlier than 2025-03-03 |  |
| 33 | 1.5.2 | Shipping |  | 14d? | 2025-04-09 | 2025-04-28 | 32 | start no earlier than 2025-03-19 |  |
| 34 | 1.5.3 | Manufacture and Commission |  | 6d? | 2025-04-29 | 2025-05-06 | 33 |  |  |
| 35 | 1.6 | **EXPANSION Board** |  | 61d? | 2025-03-03 | 2025-05-26 |  |  | Oliver Bunny |
| 36 | 1.6.1 | Design |  | 41d? | 2025-03-03 | 2025-04-28 |  | start no earlier than 2025-03-03 |  |
| 37 | 1.6.2 | Shipping |  | 14d? | 2025-04-29 | 2025-05-16 | 36 | start no earlier than 2025-03-19 |  |
| 38 | 1.6.3 | Manufacture and Commission |  | 6d? | 2025-05-19 | 2025-05-26 | 37 |  |  |
| 39 | 2 | **LVD V3.3** |  | 38d? | 2025-05-05 | 2025-06-25 | 27 |  | Oscar Rudman |
| 40 | 2.1 | Design |  | 18d? | 2025-05-05 | 2025-05-28 |  | start no earlier than 2025-05-05 |  |
| 41 | 2.2 | Shipping |  | 14d? | 2025-05-29 | 2025-06-17 | 40 | start no earlier than 2025-03-19 |  |
| 42 | 2.3 | Manufacture and Commission |  | 6d? | 2025-06-18 | 2025-06-25 | 41 |  |  |
| 43 | 3 | NU24 Integration Test |  | 4d? | 2025-05-28 | 2025-06-02 | 1 | start no earlier than 2025-05-24 |  |
| 44 | 4 | Fault Finding and Fixing |  | 21d? | 2025-06-03 | 2025-07-01 | 43 |  |  |
| 45 | 5 | NU25 Driving | milestone | 1d? | 2025-07-02 | 2025-07-02 | 44 | start no earlier than 2025-06-30 |  |
